# NUS-BPM-v3-2007

Schedule from MS Project, 2015-04-13 to 2015-05-14, A marks actual dates.

## Calendars

- Standard: Mon-Fri 08:00-12:00, 13:00-17:00; Sat-Sun off.

## Resources

| Resource |
| --- |
| NUS |
| NIS |
| i2s |

## Schedule

| ID | WBS | Task | Type | Duration | Start | Finish | Predecessors | Complete | Remaining | Baseline start | Baseline finish | Baseline duration | Total slack | Free slack | Constraint | Resources | Work | Actual work |
| --- | --- | --- | --- | --- | --- | --- | --- | --- | --- | --- | --- | --- | --- | --- | --- | --- | --- | --- |
| 1 | 1 | start | milestone | 0d | 2015-04-13 | 2015-04-13 |  |  |  | 2015-04-13 | 2015-04-13 | 0d | 23.5d |  |  |  |  |  |
| 2 | 2 | **Overall** |  | 23.5d | 2015-04-13 A | 2015-05-14 |  | 7% | 21.75d | 2015-04-13 | 2015-05-11 | 21d | 0d |  |  |  | 216h | 32h |
| 3 | 2.1 | **Initiation** |  | 2d | 2015-04-15 A | 2015-04-17 |  | 99% | 0d | 2015-04-15 | 2015-04-17 | 2d | 19.5d |  |  |  |  |  |
| 4 | 2.1.1 | Project Kickoff |  | 0.5d | 2015-04-15 A | 2015-04-15 A |  | 100% |  | 2015-04-15 | 2015-04-15 | 0.5d |  |  | start no earlier than 2015-04-15 |  |  |  |
| 5 | 2.1.2 | PMP submission | milestone | 0d | 2015-04-17 | 2015-04-17 |  |  |  | 2015-04-17 | 2015-04-17 | 0d | 19.5d |  | start no earlier than 2015-04-17 |  |  |  |
| 6 | 2.2 | **Specification Confirmation** |  | 7d | 2015-04-13 A | 2015-04-21 |  | 36% | 4.45d | 2015-04-13 | 2015-04-21 | 7d | 16.5d |  |  |  | 88h | 32h |
| 7 | 2.2.1 | Requirement discussion |  | 5d | 2015-04-13 A | 2015-04-17 |  | 80% | 1d | 2015-04-13 | 2015-04-17 | 5d | 16.5d | 0d |  | NUS | 40h | 32h |
| 8 | 2.2.2 | Deployment Plan Review |  | 2d | 2015-04-20 | 2015-04-21 | 7 |  |  | 2015-04-20 | 2015-04-21 | 2d | 16.5d | 0d |  | NUS | 16h |  |
| 9 | 2.2.3 | look&feel guideline Review |  | 2d | 2015-04-20 | 2015-04-21 | 7 |  |  | 2015-04-20 | 2015-04-21 | 2d | 16.5d |  |  | NUS | 16h |  |
| 10 | 2.2.4 | Acceptance Test Review |  | 2d | 2015-04-20 | 2015-04-21 | 7 |  |  | 2015-04-20 | 2015-04-21 | 2d | 16.5d | 0d |  | NUS | 16h |  |
| 11 | 2.2.5 | signoff | milestone | 0d | 2015-04-21 | 2015-04-21 | 8, 10 |  |  | 2015-04-21 | 2015-04-21 | 0d | 16.5d |  |  |  |  |  |
| 12 | 2.3 | **Development** |  | 12d | 2015-04-13 | 2015-04-28 |  |  |  | 2015-04-13 | 2015-04-28 | 12d | 11.5d |  |  |  |  |  |
| 13 | 2.3.1 | **OOF integration** |  | 12d | 2015-04-13 | 2015-04-28 |  |  |  | 2015-04-13 | 2015-04-24 | 10d | 11.5d | 0d |  |  |  |  |
| 14 | 2.3.1.1 | coding |  | 7d | 2015-04-13 | 2015-04-21 |  |  |  |  |  |  | 11.5d | 0d |  |  |  |  |
| 15 | 2.3.1.2 | SIT |  | 3d | 2015-04-22 | 2015-04-24 | 14 |  |  |  |  |  | 11.5d | 0d |  |  |  |  |
| 16 | 2.3.1.3 | SIT in NUS |  | 2d | 2015-04-27 | 2015-04-28 | 15 |  |  |  |  |  | 11.5d |  |  |  |  |  |
| 17 | 2.3.2 | **2FA integration** |  | 3d | 2015-04-20 | 2015-04-22 | 13SS+5d |  |  | 2015-04-20 | 2015-04-28 | 7d | 15.5d |  |  |  |  |  |
| 18 | 2.3.2.1 | Verification of ADFS approach |  | 3d | 2015-04-20 | 2015-04-22 |  |  |  |  |  |  | 15.5d |  |  |  |  |  |
| 19 | 2.4 | **Training** |  | 5d | 2015-04-20 | 2015-04-24 |  |  |  | 2015-04-20 | 2015-04-24 | 5d | 13.5d |  |  |  | 40h |  |
| 20 | 2.4.1 | BPM Training |  | 5d | 2015-04-20 | 2015-04-24 |  |  |  | 2015-04-20 | 2015-04-24 | 5d | 13.5d |  | start no earlier than 2015-04-20 | NUS | 40h |  |
| 21 | 2.5 | **Install & Config (DEV)** |  | 8.75d | 2015-04-17 | 2015-04-29 |  |  |  | 2015-04-22 | 2015-04-30 | 7d | 0d |  |  |  | 16h |  |
| 22 | 2.5.1 | dev env setup |  | 1d | 2015-04-17 | 2015-04-17 |  |  |  | 2015-04-22 | 2015-04-22 | 1d | 0d |  | must start on 2015-04-17 | NUS | 8h |  |
| 23 | 2.5.2 | Verify the Dev Environment (Oracle instance running, firewall ports, remote access information, Software Image with location) |  | 0.5d | 2015-04-22 | 2015-04-22 | 22FS+2d |  |  |  |  |  | 10.75d | 0d |  |  |  |  |
| 24 | 2.5.3 | Check VPN environment credentials and log into the Server |  | 0.5d | 2015-04-22 | 2015-04-22 | 23 |  |  |  |  |  | 10.75d | 0d |  |  |  |  |
| 25 | 2.5.4 | install and config system |  | 2d | 2015-04-23 | 2015-04-24 | 24 |  |  | 2015-04-23 | 2015-04-29 | 5d | 10.75d | 0d |  |  |  |  |
| 26 | 2.5.5 | Deploy the sample process/workflow |  | 0.25d | 2015-04-27 | 2015-04-27 | 25 |  |  |  |  |  | 10.75d | 0d |  |  |  |  |
| 27 | 2.5.6 | Dev Preparation and execution of Test Scenario and test cases |  | 1d | 2015-04-27 | 2015-04-28 | 26 |  |  |  |  |  | 10.75d | 0d |  |  |  |  |
| 28 | 2.5.7 | Dev Env Summary report and Installation documentation |  | 0.5d | 2015-04-28 | 2015-04-28 | 27 |  |  |  |  |  | 10.75d | 0d |  |  |  |  |
| 29 | 2.5.8 | DEV env testing |  | 1d | 2015-04-28 | 2015-04-29 | 28 |  |  | 2015-04-30 | 2015-04-30 | 1d | 10.75d | 0d |  | NUS | 8h |  |
| 30 | 2.5.9 | sign off | milestone | 0d | 2015-04-29 | 2015-04-29 | 29 |  |  | 2015-04-30 | 2015-04-30 | 0d | 10.75d |  |  |  |  |  |

Notes:
- 23: Verification of the Development Environment: / Signifies that following pre-requisites / 1) All allocated firewall ports are opened. / 2) VPN access is established with out any difficults. / 3) Check on the network performance based on the VPN connectivity. / 4) Check on the required software binary is available. / 5) Check on JDK and Oracle instance are working.
- 24: Check on the VPN connectivity and credentials are working with proper privielleges for BPM installation user should have admin privielleges. / Ensure NUS support with SPOC email and contact information for immediate resolution.
- 25: 1. Installation of the BPM server / 2. Profile creation for the BPM server.
- 27: 1. Preparation of test scenario for functional and platform. / 2. Execution of test cases for functional and platform integration touch points like Process server, Admin console etc.

| ID | WBS | Task | Type | Duration | Start | Finish | Predecessors | Baseline start | Baseline finish | Baseline duration | Total slack | Free slack | Resources | Work |
| --- | --- | --- | --- | --- | --- | --- | --- | --- | --- | --- | --- | --- | --- | --- |
| 31 | 2.6 | **Install & Config (UAT)** |  | 9.75d | 2015-04-20 | 2015-05-01 |  | 2015-04-23 | 2015-05-04 | 8d | 0d |  |  | 24h |
| 32 | 2.6.1 | uat env setup |  | 1d | 2015-04-20 | 2015-04-20 | 22 | 2015-04-23 | 2015-04-23 | 1d | 0d |  | NUS | 8h |
| 33 | 2.6.2 | UAT InfraStructure readiness and Availability | milestone | 0d | 2015-04-20 | 2015-04-20 | 32 |  |  |  | 17.5d |  | NUS |  |
| 34 | 2.6.3 | Verify the Dev Environment (Oracle instance running, firewall ports, remote access information, Software Image with location) |  | 0.5d | 2015-04-23 | 2015-04-23 | 32FS+2d |  |  |  | 8.75d | 0d |  |  |
| 35 | 2.6.4 | Check VPN environment credentials and log into the Server |  | 0.5d | 2015-04-23 | 2015-04-23 | 34 |  |  |  | 8.75d | 0d |  |  |
| 36 | 2.6.5 | install and config system |  | 2d | 2015-04-24 | 2015-04-27 | 35 | 2015-04-23 | 2015-04-29 | 5d | 8.75d | 0d |  |  |
| 37 | 2.6.6 | Deploy the sample process/workflow |  | 0.25d | 2015-04-28 | 2015-04-28 | 36 |  |  |  | 8.75d | 0d |  |  |
| 38 | 2.6.7 | UAT Preparation and execution of Test Scenario and test cases |  | 1d | 2015-04-28 | 2015-04-29 | 37 |  |  |  | 8.75d | 0d |  |  |
| 39 | 2.6.8 | UAT Env Summary report and Installation documentation |  | 0.5d | 2015-04-29 | 2015-04-29 | 38 |  |  |  | 8.75d | 0d |  |  |
| 40 | 2.6.9 | UAT env testing |  | 2d | 2015-04-29 | 2015-05-01 | 39 | 2015-05-01 | 2015-05-04 | 2d | 8.75d | 0d | NUS | 16h |
| 41 | 2.6.10 | sign off | milestone | 0d | 2015-05-01 | 2015-05-01 | 40 | 2015-05-04 | 2015-05-04 | 0d | 8.75d |  | NUS |  |
| 42 | 2.7 | **Install & Config (PROD)** |  | 13.5d | 2015-04-21 | 2015-05-08 |  | 2015-04-24 | 2015-05-05 | 8d | 0d |  |  | 16h |
| 43 | 2.7.1 | prod env setup |  | 1d | 2015-04-21 | 2015-04-21 | 32 | 2015-04-24 | 2015-04-24 | 1d | 0d |  | NUS | 8h |
| 44 | 2.7.2 | Prod InfraStructure readiness and Availability | milestone | 0d | 2015-04-21 | 2015-04-21 | 43 |  |  |  | 0d |  | NUS |  |
| 45 | 2.7.3 | Verify the Prod Environment (Oracle instance running, firewall ports, remote access information, Software Image with location) |  | 0.5d | 2015-04-27 | 2015-04-27 | 44FS+3d |  |  |  | 0d |  |  |  |
| 46 | 2.7.4 | Check VPN environment credentials and log into the Server for cluster environment |  | 0.5d | 2015-04-27 | 2015-04-27 | 45 |  |  |  | 0d |  |  |  |
| 47 | 2.7.5 | install and config system for cluster environment |  | 4d | 2015-04-28 | 2015-05-01 | 46 | 2015-04-23 | 2015-04-29 | 5d | 0d |  |  |  |
| 48 | 2.7.6 | Deploy the sample process/workflow |  | 0.5d | 2015-05-04 | 2015-05-04 | 47 |  |  |  | 0d |  |  |  |
| 49 | 2.7.7 | Prod Preparation and execution of Test Scenario and test cases |  | 2d | 2015-05-04 | 2015-05-06 | 48 |  |  |  | 0d |  |  |  |
| 50 | 2.7.8 | Prod Env Summary report and Installation documentation |  | 1d | 2015-05-06 | 2015-05-07 | 49 |  |  |  | 0d |  |  |  |
| 51 | 2.7.9 | env testing |  | 1d | 2015-05-07 | 2015-05-08 | 50 | 2015-05-05 | 2015-05-05 | 1d | 0d |  | NUS | 8h |
| 52 | 2.7.10 | sign off | milestone | 0d | 2015-05-08 | 2015-05-08 | 51 | 2015-05-05 | 2015-05-05 | 0d | 0d |  | NUS |  |
| 53 | 2.8 | **Acceptance Testing** |  | 4d | 2015-05-08 | 2015-05-14 |  | 2015-05-06 | 2015-05-11 | 4d | 0d |  |  | 32h |
| 54 | 2.8.1 | Acceptance testing |  | 2d | 2015-05-08 | 2015-05-12 | 52 | 2015-05-06 | 2015-05-07 | 2d | 0d |  | NUS | 16h |
| 55 | 2.8.2 | backup & recovery testing |  | 2d | 2015-05-12 | 2015-05-14 | 54 | 2015-05-08 | 2015-05-11 | 2d | 0d |  | NUS | 16h |
| 56 | 2.8.3 | Acceptance signoff | milestone | 0d | 2015-05-14 | 2015-05-14 | 55 | 2015-05-11 | 2015-05-11 | 0d | 0d |  | NUS |  |
| 57 | 3 | end | milestone | 0d | 2015-05-14 | 2015-05-14 | 2 | 2015-05-11 | 2015-05-11 | 0d | 0d |  |  |  |

Notes:
- 33: Notification email from NUS that UAT Environment is ready for BPM installation. / Check point
- 34: Verification of the UAT Environment: / Signifies that following pre-requisites / 1) All allocated firewall ports are opened. / 2) VPN access is established with out any difficults. / 3) Check on the network performance based on the VPN connectivity. / 4) Check on the required software binary is available. / 5) Check on JDK and Oracle instance are working.
- 35: Check on the VPN connectivity and credentials are working with proper privielleges for BPM installation user should have admin privielleges. / Ensure NUS support with SPOC email and contact information for immediate resolution.
- 36: 1. Installation of the BPM server / 2. Profile creation for the BPM server.
- 38: 1. Preparation of test scenario for functional and platform. / 2. Execution of test cases for functional and platform integration touch points like Process server, Admin console etc.
- 44: Notification email from NUS that Prod Environment is ready for BPM installation. / Check point
- 45: Verification of the Prod Environment: / Signifies that following pre-requisites / 1) All allocated firewall ports are opened. / 2) VPN access is established with out any difficults. / 3) Check on the network performance based on the VPN connectivity. / 4) Check on the required software binary is available. / 5) Check on JDK and Oracle instance are working.
- 46: Check on the VPN connectivity and credentials are working with proper privielleges for BPM installation user should have admin privielleges. / Ensure NUS support with SPOC email and contact information for immediate resolution.
- 47: 1. Installation of the BPM Cluster server / 2. Profile creation for the BPM server.
- 49: 1. Preparation of test scenario for functional and platform. / 2. Execution of test cases for functional and platform integration touch points like Process server, Admin console etc.
