# NUS-BPM-v3

Schedule from MS Project, 2015-04-13 to 2015-07-06, status date 2015-05-07, A marks actual dates.

## Calendars

- Standard: Mon-Fri 08:00-12:00, 13:00-17:00; Sat-Sun off.

## Resources

| Resource |
| --- |
| NUS |
| NIS |
| i2s |
| Arpita |
| Krishna |
| Devika |
| Padmini |
| Shailesh |
| Prahlad |
| Rajasekar |

## Schedule

| ID | WBS | Task | Type | Duration | Start | Finish | Predecessors | Complete | Remaining | Baseline start | Baseline finish | Baseline duration | Total slack | Free slack | Constraint | Resources | Work | Actual work |
| --- | --- | --- | --- | --- | --- | --- | --- | --- | --- | --- | --- | --- | --- | --- | --- | --- | --- | --- |
| 1 | 1 | start | milestone | 0d | 2015-04-13 A | 2015-04-13 A |  | 100% |  | 2015-04-13 | 2015-04-13 | 0d |  |  |  |  |  |  |
| 2 | 2 | **Overall** |  | 60.5d | 2015-04-13 A | 2015-07-06 |  | 17% | 50.42d | 2015-04-13 | 2015-05-11 | 21d | 0d |  |  |  | 764h | 144h |
| 3 | 2.1 | **Initiation** |  | 2d | 2015-04-15 A | 2015-04-17 |  | 99% | 0d | 2015-04-15 | 2015-04-17 | 2d | 56.5d |  |  |  |  |  |
| 4 | 2.1.1 | Project Kickoff |  | 0.5d | 2015-04-15 A | 2015-04-15 A |  | 100% |  | 2015-04-15 | 2015-04-15 | 0.5d |  |  | start no earlier than 2015-04-15 |  |  |  |
| 5 | 2.1.2 | PMP submission | milestone | 0d | 2015-04-17 | 2015-04-17 |  |  |  | 2015-04-17 | 2015-04-17 | 0d | 55.5d |  | start no earlier than 2015-04-17 |  |  |  |
| 6 | 2.2 | **Specification Confirmation** |  | 7d | 2015-04-13 | 2015-04-21 |  |  |  | 2015-04-13 | 2015-04-21 | 7d | 0d |  |  |  | 88h |  |
| 7 | 2.2.1 | Requirement discussion |  | 5d | 2015-04-13 | 2015-04-17 |  |  |  | 2015-04-13 | 2015-04-17 | 5d | 0d |  |  | NUS | 40h |  |
| 8 | 2.2.2 | Deployment Plan Review |  | 2d | 2015-04-20 | 2015-04-21 | 7 |  |  | 2015-04-20 | 2015-04-21 | 2d | 0d |  |  | NUS | 16h |  |
| 9 | 2.2.3 | look&feel guideline Review |  | 2d | 2015-04-20 | 2015-04-21 | 7 |  |  | 2015-04-20 | 2015-04-21 | 2d | 52.5d |  |  | NUS | 16h |  |
| 10 | 2.2.4 | Acceptance Test Review |  | 2d | 2015-04-20 | 2015-04-21 | 7 |  |  | 2015-04-20 | 2015-04-21 | 2d | 0d |  |  | NUS | 16h |  |
| 11 | 2.2.5 | signoff | milestone | 0d | 2015-04-21 | 2015-04-21 | 8, 10 |  |  | 2015-04-21 | 2015-04-21 | 0d | 0d |  |  |  |  |  |
| 12 | 2.3 | **Development** |  | 12d | 2015-04-13 | 2015-04-28 |  |  |  | 2015-04-13 | 2015-04-28 | 12d | 48.5d |  |  |  |  |  |
| 13 | 2.3.1 | **OOF integration** |  | 12d | 2015-04-13 | 2015-04-28 |  |  |  | 2015-04-13 | 2015-04-24 | 10d | 48.5d | 0d |  |  |  |  |
| 14 | 2.3.1.1 | coding |  | 7d | 2015-04-13 | 2015-04-21 |  |  |  |  |  |  | 47.5d | 0d |  |  |  |  |
| 15 | 2.3.1.2 | SIT |  | 3d | 2015-04-22 | 2015-04-24 | 14 |  |  |  |  |  | 47.5d | 0d |  |  |  |  |
| 16 | 2.3.1.3 | SIT in NUS |  | 2d | 2015-04-27 | 2015-04-28 | 15 |  |  |  |  |  | 47.5d |  |  |  |  |  |
| 17 | 2.3.2 | **2FA integration** |  | 3d | 2015-04-20 | 2015-04-22 | 13SS+5d |  |  | 2015-04-20 | 2015-04-28 | 7d | 52.5d |  |  |  |  |  |
| 18 | 2.3.2.1 | Verification of ADFS approach |  | 3d | 2015-04-20 | 2015-04-22 |  |  |  |  |  |  | 51.5d |  |  |  |  |  |
| 19 | 2.4 | **Install & Config (DEV)** |  | 20.25d | 2015-04-17 A | 2015-05-15 |  | 69% | 6.31d | 2015-04-22 | 2015-04-30 | 7d | 36.25d |  |  |  | 186h | 128h |
| 20 | 2.4.1 | dev env setup |  | 1d | 2015-04-17 A | 2015-04-17 A |  | 100% |  | 2015-04-22 | 2015-04-22 | 1d |  |  | must start on 2015-04-17 | NUS | 8h | 8h |
| 21 | 2.4.2 | Verify the Dev Environment (Oracle instance running, firewall ports, remote access information, Software Image with location) |  | 0.5d | 2015-04-22 A | 2015-04-22 A | 20FS+2d | 100% |  |  |  |  |  |  |  | Shailesh | 4h | 4h |
| 22 | 2.4.3 | Check VPN environment credentials and log into the Server |  | 0.5d | 2015-04-22 A | 2015-04-22 A | 21 | 100% |  |  |  |  |  |  |  | Shailesh | 4h | 4h |
| 23 | 2.4.4 | install instance cluster environment and config system |  | 5d | 2015-04-23 A | 2015-04-29 A | 22 | 100% |  | 2015-04-23 | 2015-04-29 | 5d |  |  |  | Shailesh | 40h | 40h |
| 24 | 2.4.5 | Oracle Database Issue and Port Reconfiguration |  | 3d | 2015-04-30 A | 2015-05-04 A | 23 | 100% |  |  |  |  |  |  |  | Shailesh | 24h | 24h |
| 25 | 2.4.6 | Test case preparation |  | 2d | 2015-04-30 A | 2015-05-01 A | 23 | 100% |  |  |  |  |  |  |  | Padmini | 16h | 16h |
| 26 | 2.4.7 | Deploy the sample process/workflow |  | 0.25d | 2015-05-04 A | 2015-05-04 A | 25 | 100% |  |  |  |  |  |  |  | Shailesh | 2h | 2h |
| 27 | 2.4.8 | Installation of process server cluster |  | 3d | 2015-05-04 A | 2015-05-07 A | 26 | 100% |  |  |  |  |  |  |  | Shailesh | 24h | 24h |
| 28 | 2.4.9 | Preparation of Installation Documentation |  | 2d | 2015-05-07 A | 2015-05-11 | 24, 27 | 38% | 1.25d |  |  |  | 0d |  |  | Rajasekar | 16h | 6h |
| 29 | 2.4.10 | Test case Execution |  | 2d | 2015-05-05 | 2015-05-07 | 26FS+1d |  |  |  |  |  | 41.25d |  |  | Padmini | 16h |  |
| 30 | 2.4.11 | Review of Installation procedure Document |  | 2d | 2015-05-11 | 2015-05-13 | 28 |  |  |  |  |  | 0d |  |  | NUS | 16h |  |
| 31 | 2.4.12 | Dev Execution Summary Report |  | 1d | 2015-05-13 | 2015-05-14 | 28, 30 |  |  |  |  |  | 0d |  |  | Padmini | 8h |  |
| 32 | 2.4.13 | DEV env testing |  | 1d | 2015-05-14 | 2015-05-15 | 31 |  |  | 2015-04-30 | 2015-04-30 | 1d | 35.25d | 0d |  | NUS | 8h |  |
| 33 | 2.4.14 | sign off | milestone | 0d | 2015-05-15 | 2015-05-15 | 32 |  |  | 2015-04-30 | 2015-04-30 | 0d | 35.25d |  |  | NUS |  |  |

Notes:
- 21: Verification of the Development Environment: / Signifies that following pre-requisites / 1) All allocated firewall ports are opened. / 2) VPN access is established with out any difficults. / 3) Check on the network performance based on the VPN connectivity. / 4) Check on the required software binary is available. / 5) Check on JDK and Oracle instance are working.
- 22: Check on the VPN connectivity and credentials are working with proper privielleges for BPM installation user should have admin privielleges. / Ensure NUS support with SPOC email and contact information for immediate resolution.
- 23: 1. Installation of the BPM server / 2. Profile creation for the BPM server.

| ID | WBS | Task | Type | Duration | Start | Finish | Predecessors | Baseline start | Baseline finish | Baseline duration | Total slack | Free slack | Resources | Work |
| --- | --- | --- | --- | --- | --- | --- | --- | --- | --- | --- | --- | --- | --- | --- |
| 34 | 2.5 | **Install & Config (UAT)** |  | 19.5d | 2015-05-14 | 2015-06-10 |  | 2015-04-23 | 2015-05-04 | 8d | 0d |  |  | 158h |
| 35 | 2.5.1 | uat env setup |  | 2d | 2015-05-14 | 2015-05-18 | 31 | 2015-04-23 | 2015-04-23 | 1d | 0d |  | NUS | 16h |
| 36 | 2.5.2 | UAT InfraStructure readiness and Availability | milestone | 0d | 2015-05-18 | 2015-05-18 | 35 |  |  |  | 35.25d |  | NUS |  |
| 37 | 2.5.3 | Verify the Dev Environment (Oracle instance running, firewall ports, remote access information, Software Image with location) |  | 1d | 2015-05-20 | 2015-05-21 | 35FS+2d |  |  |  | 0d |  | Shailesh | 8h |
| 38 | 2.5.4 | Check VPN environment credentials and log into the Server |  | 1d | 2015-05-21 | 2015-05-22 | 37 |  |  |  | 0d |  | Shailesh | 8h |
| 39 | 2.5.5 | install instance cluster environment and config system |  | 5d | 2015-05-22 | 2015-05-29 | 38 | 2015-04-23 | 2015-04-29 | 5d | 0d |  | Shailesh | 40h |
| 40 | 2.5.6 | Installaton of process server cluster environment |  | 3d | 2015-05-29 | 2015-06-03 | 39 |  |  |  | 0d |  | Shailesh | 24h |
| 41 | 2.5.7 | Deploy the sample process/workflow |  | 0.25d | 2015-06-03 | 2015-06-03 | 40 |  |  |  | 0d |  | Shailesh | 2h |
| 42 | 2.5.8 | UAT Test case updation |  | 1d | 2015-06-03 | 2015-06-04 | 41 |  |  |  | 18.5d | 0d | Padmini | 8h |
| 43 | 2.5.9 | UAT Execution |  | 1d | 2015-06-04 | 2015-06-05 | 42 |  |  |  | 18.5d | 0.75d | Padmini | 8h |
| 44 | 2.5.10 | Preparation of UAT Installation Documentation |  | 2d | 2015-06-03 | 2015-06-05 | 40 |  |  |  | 17.75d | 0d | Rajasekar | 16h |
| 45 | 2.5.11 | Review incorporation on Installation |  | 1d | 2015-06-05 | 2015-06-08 | 44 |  |  |  | 17.75d | 0d | NUS | 8h |
| 46 | 2.5.12 | UAT Env Summary report and Installation documentation |  | 0.5d | 2015-06-08 | 2015-06-08 | 43, 45 |  |  |  | 17.75d | 0d | Padmini | 4h |
| 47 | 2.5.13 | UAT env testing |  | 2d | 2015-06-08 | 2015-06-10 | 46 | 2015-05-01 | 2015-05-04 | 2d | 17.75d | 0d | NUS | 16h |
| 48 | 2.5.14 | sign off | milestone | 0d | 2015-06-10 | 2015-06-10 | 47 | 2015-05-04 | 2015-05-04 | 0d | 17.75d |  | NUS |  |
| 49 | 2.6 | **Install & Config (PROD)** |  | 19d | 2015-06-03 | 2015-06-30 |  | 2015-04-24 | 2015-05-05 | 8d | 0d |  |  | 168h |
| 50 | 2.6.1 | prod env setup |  | 1d | 2015-06-03 | 2015-06-04 | 41 | 2015-04-24 | 2015-04-24 | 1d | 0d |  | NUS | 8h |
| 51 | 2.6.2 | Prod InfraStructure readiness and Availability | milestone | 0d | 2015-06-04 | 2015-06-04 | 50 |  |  |  | 0d |  | NUS |  |
| 52 | 2.6.3 | Verify the Prod Environment (Oracle instance running, firewall ports, remote access information, Software Image with location) |  | 1d | 2015-06-04 | 2015-06-05 | 51 |  |  |  | 0d |  | Shailesh | 8h |
| 53 | 2.6.4 | Check VPN environment credentials and log into the Server for cluster environment |  | 0.5d | 2015-06-05 | 2015-06-05 | 52 |  |  |  | 0d |  | Shailesh | 4h |
| 54 | 2.6.5 | install and config system for cluster environment |  | 10d | 2015-06-08 | 2015-06-19 | 53 | 2015-04-23 | 2015-04-29 | 5d | 0d |  | Shailesh | 80h |
| 55 | 2.6.6 | Preparation of Installation Documentation |  | 2d | 2015-06-22 | 2015-06-23 | 54 |  |  |  | 0d |  | Shailesh | 16h |
| 56 | 2.6.7 | Deploy the sample process/workflow |  | 0.5d | 2015-06-24 | 2015-06-24 | 55 |  |  |  | 0d |  | Shailesh | 4h |
| 57 | 2.6.8 | Prod Preparation and execution of Test Scenario and test cases |  | 2d | 2015-06-24 | 2015-06-26 | 56 |  |  |  | 0d |  | Padmini | 16h |
| 58 | 2.6.9 | Review incorporation on Installation |  | 2d | 2015-06-24 | 2015-06-25 | 55 |  |  |  | 6.5d |  | NUS | 16h |
| 59 | 2.6.10 | Prod Env Summary report and Installation documentation |  | 1d | 2015-06-26 | 2015-06-29 | 57 |  |  |  | 0d |  | Padmini | 8h |
| 60 | 2.6.11 | env testing |  | 1d | 2015-06-29 | 2015-06-30 | 59 | 2015-05-05 | 2015-05-05 | 1d | 0d |  | NUS | 8h |
| 61 | 2.6.12 | sign off | milestone | 0d | 2015-06-30 | 2015-06-30 | 60 | 2015-05-05 | 2015-05-05 | 0d | 0d |  | NUS |  |

Notes:
- 36: Notification email from NUS that UAT Environment is ready for BPM installation. / Check point
- 37: Verification of the UAT Environment: / Signifies that following pre-requisites / 1) All allocated firewall ports are opened. / 2) VPN access is established with out any difficults. / 3) Check on the network performance based on the VPN connectivity. / 4) Check on the required software binary is available. / 5) Check on JDK and Oracle instance are working.
- 38: Check on the VPN connectivity and credentials are working with proper privielleges for BPM installation user should have admin privielleges. / Ensure NUS support with SPOC email and contact information for immediate resolution.
- 39: 1. Installation of the BPM server / 2. Profile creation for the BPM server.
- 42: 1. Preparation of test scenario for functional and platform. / 2. Execution of test cases for functional and platform integration touch points like Process server, Admin console etc.
- 51: Notification email from NUS that Prod Environment is ready for BPM installation. / Check point
- 52: Verification of the Prod Environment: / Signifies that following pre-requisites / 1) All allocated firewall ports are opened. / 2) VPN access is established with out any difficults. / 3) Check on the network performance based on the VPN connectivity. / 4) Check on the required software binary is available. / 5) Check on JDK and Oracle instance are working.
- 53: Check on the VPN connectivity and credentials are working with proper privielleges for BPM installation user should have admin privielleges. / Ensure NUS support with SPOC email and contact information for immediate resolution.
- 54: 1. Installation of the BPM Cluster server / 2. Profile creation for the BPM server.
- 57: 1. Preparation of test scenario for functional and platform. / 2. Execution of test cases for functional and platform integration touch points like Process server, Admin console etc.

| ID | WBS | Task | Type | Duration | Start | Finish | Predecessors | Complete | Remaining | Baseline start | Baseline finish | Baseline duration | Total slack | Free slack | Constraint | Resources | Work | Actual work |
| --- | --- | --- | --- | --- | --- | --- | --- | --- | --- | --- | --- | --- | --- | --- | --- | --- | --- | --- |
| 62 | 2.7 | **Out of Office Development** |  | 13.5d | 2015-05-04 A | 2015-05-21 |  | 17% | 11.15d |  |  |  | 32d |  |  |  | 92h | 16h |
| 63 | 2.7.1 | Collect Requirement |  | 1d | 2015-05-04 A | 2015-05-04 A |  | 100% |  |  |  |  |  |  | start no earlier than 2015-05-04 | Arpita | 8h | 8h |
| 64 | 2.7.2 | Preparation of SOW |  | 1d | 2015-05-07 A | 2015-05-07 A | 63FS+2d | 100% |  |  |  |  |  |  |  | Krishna | 8h | 8h |
| 65 | 2.7.3 | Acceptance on SOW |  | 1d | 2015-05-08 | 2015-05-08 | 64 |  |  |  |  |  | 31d | 0d |  | NUS | 8h |  |
| 66 | 2.7.4 | Preparation of Design flow |  | 2d | 2015-05-11 | 2015-05-12 | 65 |  |  |  |  |  | 31d | 0d |  | Arpita | 16h |  |
| 67 | 2.7.5 | Development of flows and screens |  | 4d | 2015-05-13 | 2015-05-18 | 66 |  |  |  |  |  | 31d | 0d |  | Devika | 32h |  |
| 68 | 2.7.6 | Preparation of Test cases |  | 1d | 2015-05-19 | 2015-05-19 | 67 |  |  |  |  |  | 31d | 0d |  | Padmini | 8h |  |
| 69 | 2.7.7 | Deploy the flow in Development Environment |  | 0.25d | 2015-05-20 | 2015-05-20 | 68 |  |  |  |  |  | 31d | 0d |  | Arpita | 2h |  |
| 70 | 2.7.8 | Execution of test cases |  | 1d | 2015-05-20 | 2015-05-21 | 69 |  |  |  |  |  | 31d | 0d |  | Padmini | 8h |  |
| 71 | 2.7.9 | Executive Summary Report |  | 0.25d | 2015-05-21 | 2015-05-21 | 70 |  |  |  |  |  | 31d | 0d |  | Padmini | 2h |  |
| 72 | 2.7.10 | Verification of deployed flows | milestone | 0d | 2015-05-21 | 2015-05-21 | 71 |  |  |  |  |  | 31d |  |  | NUS |  |  |
| 73 | 2.8 | **Training** |  | 5d | 2015-05-25 | 2015-05-29 |  |  |  | 2015-04-20 | 2015-04-24 | 5d | 25.5d |  |  |  | 40h |  |
| 74 | 2.8.1 | BPM Training |  | 5d | 2015-05-25 | 2015-05-29 |  |  |  | 2015-04-20 | 2015-04-24 | 5d | 24.5d |  | start no earlier than 2015-05-25 | NUS | 40h |  |
| 75 | 2.9 | **Acceptance Testing** |  | 4d | 2015-06-30 | 2015-07-06 |  |  |  | 2015-05-06 | 2015-05-11 | 4d | 0d |  |  |  | 32h |  |
| 76 | 2.9.1 | Acceptance testing |  | 2d | 2015-06-30 | 2015-07-02 | 61 |  |  | 2015-05-06 | 2015-05-07 | 2d | 0d |  |  | NUS | 16h |  |
| 77 | 2.9.2 | backup & recovery testing |  | 2d | 2015-07-02 | 2015-07-06 | 76 |  |  | 2015-05-08 | 2015-05-11 | 2d | 0d |  |  | NUS | 16h |  |
| 78 | 2.9.3 | Acceptance signoff | milestone | 0d | 2015-07-06 | 2015-07-06 | 77 |  |  | 2015-05-11 | 2015-05-11 | 0d | 0d |  |  | NUS |  |  |
| 79 | 3 | end | milestone | 0d | 2015-07-06 | 2015-07-06 | 2 |  |  | 2015-05-11 | 2015-05-11 | 0d | 0d |  |  |  |  |  |

Notes:
- 63: Out of Office requirement was initiated by i2s on 2 May 2015 and shared the SOW for STEE and NUS acceptance is 7 May 2015, however we start earlier in this task
