# NUS-ProjectPlan

Schedule from MS Project, 2015-04-13 to 2015-05-11, A marks actual dates.

## Calendars

- Standard: Mon-Fri 08:00-12:00, 13:00-17:00; Sat-Sun off.

## Resources

| Resource |
| --- |
| NUS |
| NIS |
| i2s |

## Schedule

| ID | WBS | Task | Type | Duration | Start | Finish | Predecessors | Complete | Remaining | Baseline start | Baseline finish | Baseline duration | Total slack | Free slack | Constraint | Resources | Work | Actual work |
| --- | --- | --- | --- | --- | --- | --- | --- | --- | --- | --- | --- | --- | --- | --- | --- | --- | --- | --- |
| 1 | 1 | start | milestone | 0d | 2015-04-13 | 2015-04-13 |  |  |  | 2015-04-13 | 2015-04-13 | 0d | 21d |  |  |  |  |  |
| 2 | 2 | **Overall** |  | 21d | 2015-04-13 A | 2015-05-11 |  | 14% | 18.15d | 2015-04-13 | 2015-05-11 | 21d | 0d |  |  |  | 238h | 32h |
| 3 | 2.1 | **Initiation** |  | 2d | 2015-04-15 A | 2015-04-17 |  | 99% | 0d | 2015-04-15 | 2015-04-17 | 2d | 17d |  |  |  |  |  |
| 4 | 2.1.1 | Project Kickoff |  | 0.5d | 2015-04-15 A | 2015-04-15 A |  | 100% |  | 2015-04-15 | 2015-04-15 | 0.5d |  |  | start no earlier than 2015-04-15 |  |  |  |
| 5 | 2.1.2 | PMP submission | milestone | 0d | 2015-04-17 | 2015-04-17 |  |  |  | 2015-04-17 | 2015-04-17 | 0d | 17d |  | start no earlier than 2015-04-17 |  |  |  |
| 6 | 2.2 | **Specification Confirmation** |  | 7d | 2015-04-13 A | 2015-04-21 |  | 36% | 4.45d | 2015-04-13 | 2015-04-21 | 7d | 14d |  |  |  | 88h | 32h |
| 7 | 2.2.1 | Requirement discussion |  | 5d | 2015-04-13 A | 2015-04-17 |  | 80% | 1d | 2015-04-13 | 2015-04-17 | 5d | 0d |  |  | NUS | 40h | 32h |
| 8 | 2.2.2 | Deployment Plan Review |  | 2d | 2015-04-20 | 2015-04-21 | 7 |  |  | 2015-04-20 | 2015-04-21 | 2d | 0d |  |  | NUS | 16h |  |
| 9 | 2.2.3 | look&feel guideline Review |  | 2d | 2015-04-20 | 2015-04-21 | 7 |  |  | 2015-04-20 | 2015-04-21 | 2d | 14d |  |  | NUS | 16h |  |
| 10 | 2.2.4 | Acceptance Test Review |  | 2d | 2015-04-20 | 2015-04-21 | 7 |  |  | 2015-04-20 | 2015-04-21 | 2d | 0d |  |  | NUS | 16h |  |
| 11 | 2.2.5 | signoff | milestone | 0d | 2015-04-21 | 2015-04-21 | 8, 10 |  |  | 2015-04-21 | 2015-04-21 | 0d | 0d |  |  |  |  |  |
| 12 | 2.3 | **Development** |  | 12d | 2015-04-13 A | 2015-04-28 |  | 19% | 9.75d | 2015-04-13 | 2015-04-28 | 12d | 9d |  |  |  |  |  |
| 13 | 2.3.1 | OOF integration |  | 10d | 2015-04-13 A | 2015-04-24 |  | 45% | 5.5d | 2015-04-13 | 2015-04-24 | 10d | 11d | 0d |  |  |  |  |
| 14 | 2.3.2 | delegation email integration |  | 7d | 2015-04-20 | 2015-04-28 | 13SS+5d |  |  | 2015-04-20 | 2015-04-28 | 7d | 9d |  |  |  |  |  |
| 15 | 2.3.3 | 2FA integration |  | 7d | 2015-04-20 | 2015-04-28 | 13SS+5d |  |  | 2015-04-20 | 2015-04-28 | 7d | 9d |  |  |  |  |  |
| 16 | 2.4 | **Training** |  | 5d | 2015-04-20 | 2015-04-24 |  |  |  | 2015-04-20 | 2015-04-24 | 5d | 11d |  |  |  | 40h |  |
| 17 | 2.4.1 | BPM Training |  | 5d | 2015-04-20 | 2015-04-24 |  |  |  | 2015-04-20 | 2015-04-24 | 5d | 11d |  | start no earlier than 2015-04-20 | NUS | 40h |  |
| 18 | 2.5 | **Install & Config (DEV)** |  | 6.75d | 2015-04-21 | 2015-04-30 | 11 |  |  | 2015-04-22 | 2015-04-30 | 7d | 0d |  |  |  | 54h |  |
| 19 | 2.5.1 | Dev InfraStructure readiness and Availability | milestone | 0d | 2015-04-21 | 2015-04-21 | 11 |  |  |  |  |  | 0d |  |  | NUS |  |  |
| 20 | 2.5.2 | dev env setup |  | 1d | 2015-04-22 | 2015-04-22 | 19 |  |  | 2015-04-22 | 2015-04-22 | 1d | 0d |  |  | NUS | 8h |  |
| 21 | 2.5.3 | Verify the Dev Environment (Oracle instance running, firewall ports, remote access information, Software Image with location) |  | 0.5d | 2015-04-23 | 2015-04-23 | 20 |  |  |  |  |  | 7.25d | 0d |  | i2s | 4h |  |
| 22 | 2.5.4 | Check VPN environment credentials and log into the Server |  | 0.5d | 2015-04-23 | 2015-04-23 | 21 |  |  |  |  |  | 7.25d | 0d |  | i2s | 4h |  |
| 23 | 2.5.5 | install and config system |  | 2d | 2015-04-24 | 2015-04-27 | 22 |  |  | 2015-04-23 | 2015-04-29 | 5d | 7.25d | 0d |  | i2s | 16h |  |
| 24 | 2.5.6 | Deploy the sample process/workflow |  | 0.25d | 2015-04-28 | 2015-04-28 | 23 |  |  |  |  |  | 7.25d | 0d |  | i2s | 2h |  |
| 25 | 2.5.7 | Dev Preparation and execution of Test Scenario and test cases |  | 1d | 2015-04-28 | 2015-04-29 | 24 |  |  |  |  |  | 7.25d | 0d |  | i2s | 8h |  |
| 26 | 2.5.8 | Dev Env Summary report and Installation documentation |  | 0.5d | 2015-04-29 | 2015-04-29 | 25 |  |  |  |  |  | 7.25d | 0d |  | i2s | 4h |  |
| 27 | 2.5.9 | env testing |  | 1d | 2015-04-29 | 2015-04-30 | 26 |  |  | 2015-04-30 | 2015-04-30 | 1d | 7.25d | 0d |  | NUS | 8h |  |
| 28 | 2.5.10 | sign off | milestone | 0d | 2015-04-30 | 2015-04-30 | 27 |  |  | 2015-04-30 | 2015-04-30 | 0d | 7.25d |  |  |  |  |  |

Notes:
- 19: Notification email from NUS that Dev Environment is ready for BPM installation. / Check point
- 21: Verification of the Development Environment: / Signifies that following pre-requisites / 1) All allocated firewall ports are opened. / 2) VPN access is established with out any difficults. / 3) Check on the network performance based on the VPN connectivity. / 4) Check on the required software binary is available. / 5) Check on JDK and Oracle instance are working.
- 22: Check on the VPN connectivity and credentials are working with proper privielleges for BPM installation user should have admin privielleges. / Ensure NUS support with SPOC email and contact information for immediate resolution.
- 23: 1. Installation of the BPM server / 2. Profile creation for the BPM server.
- 25: 1. Preparation of test scenario for functional and platform. / 2. Execution of test cases for functional and platform integration touch points like Process server, Admin console etc.

| ID | WBS | Task | Type | Duration | Start | Finish | Predecessors | Baseline start | Baseline finish | Baseline duration | Total slack | Free slack | Resources | Work |
| --- | --- | --- | --- | --- | --- | --- | --- | --- | --- | --- | --- | --- | --- | --- |
| 29 | 2.6 | **Install & Config (UAT)** |  | 8d | 2015-04-23 | 2015-05-04 |  | 2015-04-23 | 2015-05-04 | 8d | 0d |  |  | 24h |
| 30 | 2.6.1 | uat env setup |  | 1d | 2015-04-23 | 2015-04-23 | 20 | 2015-04-23 | 2015-04-23 | 1d | 0d |  | NUS | 8h |
| 31 | 2.6.2 | install and config system |  | 5d | 2015-04-24 | 2015-04-30 | 30 | 2015-04-24 | 2015-04-30 | 5d | 0d |  |  |  |
| 32 | 2.6.3 | env testing |  | 2d | 2015-05-01 | 2015-05-04 | 31 | 2015-05-01 | 2015-05-04 | 2d | 0d |  | NUS | 16h |
| 33 | 2.6.4 | sign off | milestone | 0d | 2015-05-04 | 2015-05-04 | 32 | 2015-05-04 | 2015-05-04 | 0d | 0d |  |  |  |
| 34 | 2.7 | **Install & Config (PROD)** |  | 8d | 2015-04-24 | 2015-05-05 |  | 2015-04-24 | 2015-05-05 | 8d | 4d |  |  | 16h |
| 35 | 2.7.1 | prod env setup |  | 1d | 2015-04-24 | 2015-04-24 | 30 | 2015-04-24 | 2015-04-24 | 1d | 6d | 0d | NUS | 8h |
| 36 | 2.7.2 | install and config system |  | 5d | 2015-04-27 | 2015-05-01 | 35 | 2015-04-27 | 2015-05-01 | 5d | 6d |  |  |  |
| 37 | 2.7.3 | env testing |  | 1d | 2015-05-05 | 2015-05-05 | 33 | 2015-05-05 | 2015-05-05 | 1d | 0d |  | NUS | 8h |
| 38 | 2.7.4 | sign off | milestone | 0d | 2015-05-05 | 2015-05-05 | 37 | 2015-05-05 | 2015-05-05 | 0d | 0d |  |  |  |
| 39 | 2.8 | **Acceptance Testing** |  | 4d | 2015-05-06 | 2015-05-11 |  | 2015-05-06 | 2015-05-11 | 4d | 0d |  |  | 16h |
| 40 | 2.8.1 | Acceptance testing |  | 2d | 2015-05-06 | 2015-05-07 | 38 | 2015-05-06 | 2015-05-07 | 2d | 0d |  | NUS | 16h |
| 41 | 2.8.2 | backup & recovery testing |  | 2d | 2015-05-08 | 2015-05-11 | 40 | 2015-05-08 | 2015-05-11 | 2d | 0d |  |  |  |
| 42 | 2.8.3 | Acceptance signoff | milestone | 0d | 2015-05-11 | 2015-05-11 | 41 | 2015-05-11 | 2015-05-11 | 0d | 0d |  |  |  |
| 43 | 3 | end | milestone | 0d | 2015-05-11 | 2015-05-11 | 2 | 2015-05-11 | 2015-05-11 | 0d | 0d |  |  |  |
