# NUS-Schedule

Schedule from MS Project, 2015-04-21 to 2015-05-14.
i2s Business Solutions

## Calendars

- Standard: Mon-Fri 08:00-12:00, 13:00-17:00; Sat-Sun off.

## Resources

| Resource |
| --- |
| STE-Res1 |
| i2s-Res1 |
| FUS |
| i2s-Res2 |
| STE-Res2 |

## Schedule

| ID | WBS | Task | Type | Duration | Start | Finish | Predecessors | Total slack | Free slack | Constraint | Resources | Work |
| --- | --- | --- | --- | --- | --- | --- | --- | --- | --- | --- | --- | --- |
| 1 | 1 | **NUS Installation and Verification Project** |  | 17.5d | 2015-04-21 | 2015-05-14 |  | 0d |  |  |  | 224h |
| 2 | 1.1 | Project Kick off |  | 1d | 2015-04-21 | 2015-04-21 |  | 0d |  | start no earlier than 2015-04-21 | STE-Res1; i2s-Res1 | 16h |
| 3 | 1.2 | **Install & Config (DEV)** |  | 4.5d | 2015-04-21 | 2015-04-28 |  | 0d |  |  |  | 40h |
| 4 | 1.2.1 | Dev Infra Availability | milestone | 0d | 2015-04-21 | 2015-04-21 | 2 | 0d |  |  | FUS |  |
| 5 | 1.2.2 | Verify the Dev Environment (Oracle instance running, firewall ports, remote access information, Software Image with location) |  | 0.5d | 2015-04-22 | 2015-04-22 | 4 | 0d |  |  | i2s-Res1 | 4h |
| 6 | 1.2.3 | Check VPN environment credentials and log into the Server |  | 0.5d | 2015-04-22 | 2015-04-22 | 5 | 15.5d |  |  | i2s-Res1 | 4h |
| 7 | 1.2.4 | Install & Config (DEV) |  | 2d | 2015-04-22 | 2015-04-24 | 5 | 0d |  |  | i2s-Res1 | 16h |
| 8 | 1.2.5 | Deploy Demo Application |  | 1d | 2015-04-24 | 2015-04-27 | 7 | 0d |  |  | i2s-Res1 | 8h |
| 9 | 1.2.6 | Env Testing or Verification |  | 1d | 2015-04-27 | 2015-04-28 | 8 | 0d |  |  | i2s-Res1 | 8h |
| 10 | 1.2.7 | Sign Off | milestone | 0d | 2015-04-28 | 2015-04-28 | 9 | 12d |  |  | STE-Res1; i2s-Res1; FUS |  |
| 11 | 1.3 | **Install & Config (UAT)** |  | 8d | 2015-04-23 | 2015-05-05 |  | 7d |  |  |  | 64h |
| 12 | 1.3.1 | UAT Infra Availability | milestone | 0d | 2015-04-23 | 2015-04-23 | 5FS+1d | 7d | 0d |  | FUS |  |
| 13 | 1.3.2 | Verify the UAT Environment |  | 1d | 2015-04-23 | 2015-04-24 | 12 | 7d | 0d |  | i2s-Res2 | 8h |
| 14 | 1.3.3 | Install & Config (UAT) |  | 5d | 2015-04-24 | 2015-05-01 | 13 | 7d | 0d |  | i2s-Res2 | 40h |
| 15 | 1.3.4 | Deploy Demo Application |  | 1d | 2015-05-01 | 2015-05-04 | 14 | 7d | 0d |  | i2s-Res2 | 8h |
| 16 | 1.3.5 | Env Testing or Verification |  | 1d | 2015-05-04 | 2015-05-05 | 15 | 7d | 0d |  | i2s-Res2 | 8h |
| 17 | 1.3.6 | Sign Off | milestone | 0d | 2015-05-05 | 2015-05-05 | 16 | 7d |  |  | FUS; i2s-Res2; STE-Res2 |  |
| 18 | 1.4 | **Install & Config (PROD)** |  | 16.5d | 2015-04-21 | 2015-05-14 |  | 0d |  |  |  | 104h |
| 19 | 1.4.1 | Prod Cluster Infra Availability with Active-Active | milestone | 0d | 2015-04-21 | 2015-04-21 | 2 | 16.5d |  |  | FUS |  |
| 20 | 1.4.2 | Verify the PROD Environment |  | 1d | 2015-04-28 | 2015-04-29 | 9 | 0d |  |  | STE-Res1; i2s-Res1 | 16h |
| 21 | 1.4.3 | Install & Config (PROD) |  | 10d | 2015-04-29 | 2015-05-13 | 20 | 0d |  |  | i2s-Res1 | 80h |
| 22 | 1.4.4 | Env Testing or Verification |  | 1d | 2015-05-13 | 2015-05-14 | 21 | 0d |  |  | i2s-Res1 | 8h |
| 23 | 1.4.5 | Sign Off | milestone | 0d | 2015-05-14 | 2015-05-14 | 22 | 0d |  |  | STE-Res1; i2s-Res1 |  |
